Schedule from GanttProject, 2017-05-08 to 2017-10-20, baseline: d.

## Calendars

- Project calendar: Mon-Fri working; Sat-Sun off.

## Resources

| Resource |
| --- |
| 陈超 |
| 唐利敏 |
| 方睿 |
| 杨庆辉 |
| APP |
| 李瑜(暂替硬件) |
| 嵌入式应届生(7月） |
| 谢志华 |
| 李莹 |
| 张逸弛（6月） |
| UI |
| 伍浩文 |

## Schedule

| ID | WBS | Task | Type | Duration | Start | Finish | Baseline start | Baseline finish | Baseline duration | Resources |
| --- | --- | --- | --- | --- | --- | --- | --- | --- | --- | --- |
| 1 | 1 | 市面上两个机型测试 |  | 11d | 2017-05-22 | 2017-06-05 | 2017-05-22 | 2017-06-05 | 11d | 陈超; 唐利敏; 杨庆辉 |
| 2 | 2 | 基本型特点、研发策略的确定、市场收集反馈 | milestone | 0d | 2017-06-06 | 2017-06-06 | 2017-06-06 | 2017-06-06 | 0d |  |
| 3 | 3 | **硬件驱动** |  | 23d | 2017-05-17 | 2017-06-16 | 2017-05-17 | 2017-06-16 | 23d |  |
| 4 | 3.1 | 传感器开关电池等 |  | 14d | 2017-05-17 | 2017-06-05 | 2017-05-17 | 2017-06-05 | 14d | 杨庆辉 |
| 5 | 3.2 | 电机驱动 |  | 9d | 2017-06-06 | 2017-06-16 | 2017-06-06 | 2017-06-16 | 9d | 杨庆辉 |
| 6 | 3.3 | TFT键盘LED等 |  | 17d | 2017-05-17 | 2017-06-08 | 2017-05-17 | 2017-06-08 | 17d | 唐利敏 |
| 7 | 4 | 结构设计修改 |  | 10d | 2017-05-29 | 2017-06-09 | 2017-05-29 | 2017-06-09 | 10d | 陈超 |
| 8 | 5 | 主控板硬件第一版 |  | 23d | 2017-05-25 | 2017-06-26 | 2017-05-25 | 2017-06-26 | 23d | 李瑜(暂替硬件) |
| 9 | 6 | 电机驱动硬件第一版 |  | 23d | 2017-05-25 | 2017-06-26 | 2017-05-25 | 2017-06-26 | 23d | 李瑜(暂替硬件) |
| 10 | 7 | 基站板硬件第一版 |  | 23d | 2017-05-25 | 2017-06-26 | 2017-05-25 | 2017-06-26 | 23d | 李瑜(暂替硬件) |
| 11 | 8 | 主程序的开发 |  | 98d | 2017-05-17 | 2017-09-29 | 2017-05-17 | 2017-09-29 | 98d | 唐利敏 |
| 12 | 9 | 基于单点GPS的组合导航定位算法开发 |  | 11d | 2017-06-07 | 2017-06-21 | 2017-06-07 | 2017-06-21 | 11d | 方睿 |
| 13 | 10 | 主程序基本功能可以跑起来 | milestone | 0d | 2017-06-26 | 2017-06-26 | 2017-06-26 | 2017-06-26 | 0d |  |
| 14 | 11 | 基于硬件第一版的初步运动平台的完成 | milestone | 0d | 2017-06-30 | 2017-06-30 | 2017-06-30 | 2017-06-30 | 0d |  |
| 15 | 12 | 主计算板硬件第一版 |  | 22d | 2017-06-15 | 2017-07-14 | 2017-06-15 | 2017-07-14 | 22d | 谢志华 |
| 16 | 13 | 硬件第二版 |  | 16d | 2017-07-17 | 2017-08-07 | 2017-07-17 | 2017-08-07 | 16d | 李瑜(暂替硬件) |
| 17 | 14 | 硬件第三版 |  | 16d | 2017-08-21 | 2017-09-11 | 2017-08-21 | 2017-09-11 | 16d | 李瑜(暂替硬件) |
| 18 | 15 | UI的设计 |  | 90d | 2017-05-22 | 2017-09-22 | 2017-05-22 | 2017-09-22 | 90d | 唐利敏 |
| 19 | 16 | APP的设计 |  | 82d | 2017-06-01 | 2017-09-22 | 2017-06-01 | 2017-09-22 | 82d | 唐利敏 |
| 20 | 17 | 建图 |  | 15d | 2017-06-06 | 2017-06-26 | 2017-06-06 | 2017-06-26 | 15d | 陈超 |
| 21 | 18 | 避障算法 |  | 45d | 2017-06-27 | 2017-08-28 | 2017-06-27 | 2017-08-28 | 45d | 陈超 |
| 22 | 19 | 基于单点GPS的路径规划算法 |  | 45d | 2017-06-27 | 2017-08-28 | 2017-06-27 | 2017-08-28 | 45d | 陈超 |
| 23 | 20 | 狭窄通道算法 |  | 45d | 2017-06-27 | 2017-08-28 | 2017-06-27 | 2017-08-28 | 45d | 陈超 |
| 24 | 21 | 斜坡模式运动控制 |  | 70d | 2017-06-19 | 2017-09-22 | 2017-06-19 | 2017-09-22 | 70d | 杨庆辉 |
| 25 | 22 | 渐开线运动控制 |  | 70d | 2017-06-19 | 2017-09-22 | 2017-06-19 | 2017-09-22 | 70d | 杨庆辉 |
| 26 | 23 | 基站控制 |  | 70d | 2017-06-05 | 2017-09-08 | 2017-06-05 | 2017-09-08 | 70d | 伍浩文 |
| 27 | 24 | 遥控模式 |  | 70d | 2017-06-19 | 2017-09-22 | 2017-06-19 | 2017-09-22 | 70d | 杨庆辉 |
| 28 | 25 | 分区线程 |  | 70d | 2017-06-19 | 2017-09-22 | 2017-06-19 | 2017-09-22 | 70d | 陈超 |
| 29 | 26 | 回归基站线程 |  | 70d | 2017-06-19 | 2017-09-22 | 2017-06-19 | 2017-09-22 | 70d | 杨庆辉 |
| 30 | 27 | 边界行走及驶出线程 |  | 80d | 2017-06-05 | 2017-09-22 | 2017-06-05 | 2017-09-22 | 80d | 伍浩文 |
| 31 | 28 | 边界识别线程 |  | 80d | 2017-06-05 | 2017-09-22 | 2017-06-05 | 2017-09-22 | 80d | 伍浩文 |
| 32 | 29 | 故障检测及处理线程 |  | 70d | 2017-06-19 | 2017-09-22 | 2017-06-19 | 2017-09-22 | 70d | 唐利敏 |
| 33 | 30 | BMS检测线程 |  | 70d | 2017-06-19 | 2017-09-22 | 2017-06-19 | 2017-09-22 | 70d | 唐利敏 |
| 34 | 31 | 回归充电线程 |  | 70d | 2017-06-19 | 2017-09-22 | 2017-06-19 | 2017-09-22 | 70d | 杨庆辉 |
| 35 | 32 | 断点续割线程 |  | 70d | 2017-06-19 | 2017-09-22 | 2017-06-19 | 2017-09-22 | 70d | 杨庆辉 |
| 36 | 33 | 下雨检测线程 |  | 70d | 2017-06-19 | 2017-09-22 | 2017-06-19 | 2017-09-22 | 70d | 唐利敏 |
| 37 | 34 | 避雨线程 |  | 70d | 2017-06-19 | 2017-09-22 | 2017-06-19 | 2017-09-22 | 70d | 唐利敏 |
| 38 | 35 | 基本型功能样机的实现 | milestone | 0d | 2017-09-29 | 2017-09-29 | 2017-09-29 | 2017-09-29 | 0d |  |
| 39 | 36 | 基于摄像头方案的路径规划算法开发 |  | 21d | 2017-09-01 | 2017-09-29 | 2017-09-01 | 2017-09-29 | 21d | 陈超 |
| 40 | 37 | 摄像头边界识别及定位建图 |  | 90d | 2017-05-08 | 2017-09-08 | 2017-05-08 | 2017-09-08 | 90d | 谢志华; 李莹 |
| 41 | 38 | 展会机型联调 |  | 29d | 2017-09-11 | 2017-10-19 | 2017-09-11 | 2017-10-19 | 29d | 陈超 |
| 42 | 39 | 展会机型的实现 | milestone | 0d | 2017-10-20 | 2017-10-20 | 2017-10-20 | 2017-10-20 | 0d |  |
| 43 | 40 | 项目管理 |  | 113d | 2017-05-17 | 2017-10-20 | 2017-05-17 | 2017-10-20 | 113d | 陈超 |
| 44 | 41 | 其它未考虑到事宜 |  | 113d | 2017-05-17 | 2017-10-20 | 2017-05-17 | 2017-10-20 | 113d | 陈超 |
